# gant

Schedule from MS Project, 2017-09-27 to 2018-01-20, status date 2018-01-20, costs in ¥, A marks actual dates.

## Calendars

- 标准: Mon-Fri 08:00-12:00, 13:00-17:00; Sat-Sun off. Exceptions (off unless hours are given): 2017-10-01 08:00-12:00, 13:00-17:00, 2017-10-07 to 2017-10-08 08:00-12:00, 13:00-17:00, 2017-10-15 08:00-12:00, 13:00-17:00.

## Resources

| Resource | Rate |
| --- | --- |
| 张俊杰 | 30 |
| 饶铃根 | 30 |
| 寿俐鑫 | 30 |
| 吴卓伦 | 30 |
| 姜哲翔 | 30 |

## Schedule

| ID | WBS | Task | Type | Duration | Start | Finish | Predecessors | Complete | Remaining | Total slack | Constraint | Resources | Work | Actual work | Cost | Actual cost | 负责人 |
| --- | --- | --- | --- | --- | --- | --- | --- | --- | --- | --- | --- | --- | --- | --- | --- | --- | --- |
| 1 | 1 | **软件工程系列课程教学辅助网站** |  | 88d | 2017-09-27 08:00 A | 2018-01-20 17:00 |  | 32% | 59.75d |  |  |  | 795h | 787h | 23,850 | 23,610 | 张俊杰 |
| 2 | 1.1 | **小组成立** |  | 3d | 2017-09-27 08:00 A | 2017-09-29 17:00 |  | 39% | 1.83d |  |  |  | 12h | 8h | 360 | 240 |  |
| 3 | 1.1.1 | 职责分配 |  | 7h | 2017-09-27 08:00 A | 2017-09-27 16:00 |  | 29% | 5h | 2.12d |  | 张俊杰 [20%]; 姜哲翔 [20%]; 饶铃根 [20%]; 寿俐鑫 [20%]; 吴卓伦 [20%] | 6h | 2h | 180 | 60 |  |
| 4 | 1.1.2 | 配置管理工具安装 |  | 0.4h | 2017-09-27 10:00 A | 2017-09-27 10:24 A | 3 | 100% |  |  |  | 姜哲翔 [20%]; 饶铃根 [20%]; 寿俐鑫 [20%]; 吴卓伦 [20%]; 张俊杰 [20%] | 2h | 2h | 60 | 60 |  |
| 5 | 1.1.3 | Team Building |  | 0.8h | 2017-09-28 08:00 A | 2017-09-28 08:48 A | 3, 4 | 100% |  |  | start no earlier than 2017-09-28 08:00 | 姜哲翔 [20%]; 饶铃根 [20%]; 寿俐鑫 [20%]; 吴卓伦 [20%]; 张俊杰 [20%] | 4h | 4h | 120 | 120 |  |
| 6 | 1.1.4 | 小组成立完成 | milestone | 0d | 2017-09-27 08:00 | 2017-09-27 08:00 |  |  |  | 3d |  |  |  |  |  |  |  |
| 7 | 1.2 | **项目可行性报告** |  | 4d | 2017-09-27 08:00 A | 2017-10-01 17:00 A |  | 100% |  |  |  |  | 72h | 72h | 2,160 | 2,160 |  |
| 8 | 1.2.1 | 小组第一次会议 |  | 1h | 2017-09-27 08:00 A | 2017-09-27 09:00 A |  | 100% |  |  |  | 寿俐鑫 [20%]; 姜哲翔 [20%]; 饶铃根 [20%]; 吴卓伦 [20%]; 张俊杰 [20%] | 1h | 1h | 30 | 30 | 张俊杰 |
| 9 | 1.2.2 | 引言编写 |  | 1h | 2017-09-27 09:00 A | 2017-09-27 10:00 A | 8 | 100% |  |  |  | 吴卓伦 | 1h | 1h | 30 | 30 |  |
| 10 | 1.2.3 | 可行性分析前提 |  | 2h | 2017-09-27 10:00 A | 2017-09-27 12:00 A | 9 | 100% |  |  |  | 吴卓伦 | 2h | 2h | 60 | 60 |  |
| 11 | 1.2.4 | 方案选定 |  | 1d | 2017-09-27 13:00 A | 2017-09-28 12:00 A | 10 | 100% |  |  |  | 张俊杰 | 8h | 8h | 240 | 240 |  |
| 12 | 1.2.5 | 经济可行性分析 |  | 2h | 2017-09-28 13:00 A | 2017-09-28 15:00 A | 11 | 100% |  |  |  | 姜哲翔 | 2h | 2h | 60 | 60 |  |
| 13 | 1.2.6 | 技术可行性分析 |  | 2h | 2017-09-28 15:00 A | 2017-09-28 17:00 A | 12 | 100% |  |  |  | 饶铃根 | 2h | 2h | 60 | 60 |  |
| 14 | 1.2.7 | 操作可行性分析 |  | 2h | 2017-09-29 08:00 A | 2017-09-29 10:00 A | 13 | 100% |  |  |  | 寿俐鑫 | 2h | 2h | 60 | 60 |  |
| 15 | 1.2.8 | 法律可行性分析 |  | 2h | 2017-09-29 10:00 A | 2017-09-29 12:00 A | 14 | 100% |  |  |  | 吴卓伦 | 2h | 2h | 60 | 60 |  |
| 16 | 1.2.9 | 用户可行性分析 |  | 2h | 2017-09-29 13:00 A | 2017-09-29 15:00 A | 15 | 100% |  |  |  | 张俊杰 | 2h | 2h | 60 | 60 |  |
| 17 | 1.2.10 | 可行性报告撰写 |  | 1.25d | 2017-09-29 15:00 A | 2017-10-01 17:00 A | 8, 9, 10, 11, 12, 13, 14, 15, 16 | 100% |  |  | finish no earlier than 2017-10-01 17:00 | 姜哲翔; 饶铃根; 寿俐鑫; 吴卓伦; 张俊杰 | 50h | 50h | 1,500 | 1,500 |  |
| 18 | 1.2.11 | 可行性报告撰写完成 | milestone | 0d | 2017-10-01 08:00 A | 2017-10-01 08:00 A |  | 100% |  |  | start no earlier than 2017-10-01 08:00 |  |  |  |  |  |  |
| 19 | 1.3 | **项目计划** |  | 19d | 2017-10-02 08:00 A | 2017-10-22 17:00 |  | 94% | 1.14d |  |  |  | 545h | 541h | 16,350 | 16,230 |  |
| 20 | 1.3.1 | 小组第二次会议 |  | 12h | 2017-10-02 08:00 A | 2017-10-03 12:00 |  | 17% | 10h | 16.5d |  | 寿俐鑫 [20%]; 姜哲翔 [10%]; 饶铃根 [10%]; 吴卓伦 [10%]; 张俊杰 [50%] | 6h | 2h | 180 | 60 |  |
| 21 | 1.3.2 | 甘特图制作 |  | 1d | 2017-10-02 10:00 A | 2017-10-03 10:00 A | 20 | 100% |  |  |  | 张俊杰 | 8h | 8h | 240 | 240 |  |
| 22 | 1.3.3 | 系统概述 |  | 2h | 2017-10-03 15:00 A | 2017-10-03 17:00 A |  | 100% |  |  | finish no earlier than 2017-10-03 17:00 | 吴卓伦 | 2h | 2h | 60 | 60 |  |
| 23 | 1.3.4 | 基线 |  | 2h | 2017-10-03 08:00 A | 2017-10-03 10:00 A |  | 100% |  |  | start no earlier than 2017-10-03 08:00 | 姜哲翔 | 2h | 2h | 60 | 60 |  |
| 24 | 1.3.5 | 软件开发总体计划 |  | 2h | 2017-10-03 08:00 A | 2017-10-03 10:00 A |  | 100% |  |  | start no earlier than 2017-10-03 08:00 | 饶铃根 | 2h | 2h | 60 | 60 |  |
| 25 | 1.3.6 | 预算计划 |  | 1h | 2017-10-04 08:00 A | 2017-10-04 09:00 A |  | 100% |  |  | start no earlier than 2017-10-04 08:00 | 张俊杰 | 1h | 1h | 30 | 30 |  |
| 26 | 1.3.7 | 需求管理 |  | 1d | 2017-10-04 08:00 A | 2017-10-04 17:00 A |  | 100% |  |  | start no earlier than 2017-10-04 08:00 | 姜哲翔 [20%]; 饶铃根 [20%]; 寿俐鑫 [20%]; 吴卓伦 [20%]; 张俊杰 [20%] | 40h | 40h | 1,200 | 1,200 |  |

| ID | WBS | Task | Type | Duration | Start | Finish | Predecessors | Complete | Constraint | Resources | Work | Actual work | Cost | Actual cost |
| --- | --- | --- | --- | --- | --- | --- | --- | --- | --- | --- | --- | --- | --- | --- |
| 27 | 1.3.8 | **项目组织和人力资源** |  | 2d | 2017-10-05 08:00 A | 2017-10-06 17:00 A | 20 | 100% |  | 寿俐鑫; 张俊杰 | 44h | 44h | 1,320 | 1,320 |
| 28 | 1.3.8.1 | OBS |  | 2h | 2017-10-05 08:00 A | 2017-10-05 10:00 A |  | 100% |  | 寿俐鑫 | 2h | 2h | 60 | 60 |
| 29 | 1.3.8.2 | WBS |  | 2h | 2017-10-05 08:00 A | 2017-10-05 10:00 A |  | 100% |  | 张俊杰 | 2h | 2h | 60 | 60 |
| 30 | 1.3.8.3 | Gantt修改 |  | 1d | 2017-10-05 08:00 A | 2017-10-05 17:00 A |  | 100% |  | 张俊杰 | 8h | 8h | 240 | 240 |
| 31 | 1.3.9 | 培训计划 |  | 1d | 2017-10-05 08:00 A | 2017-10-05 17:00 A |  | 100% | start no earlier than 2017-10-05 08:00 | 寿俐鑫 | 8h | 8h | 240 | 240 |
| 32 | 1.3.10 | 风险管理 |  | 1d | 2017-10-07 08:00 A | 2017-10-07 17:00 A |  | 100% | finish no earlier than 2017-10-07 17:00 | 吴卓伦 | 8h | 8h | 240 | 240 |
| 33 | 1.3.11 | Team Building |  | 1d | 2017-10-08 08:00 A | 2017-10-08 17:00 A |  | 100% | finish no earlier than 2017-10-08 17:00 | 姜哲翔; 饶铃根; 寿俐鑫; 吴卓伦; 张俊杰 | 40h | 40h | 1,200 | 1,200 |
| 34 | 1.3.12 | 项目计划初定完成 | milestone | 0d | 2017-10-08 08:00 A | 2017-10-08 08:00 A |  | 100% | start no earlier than 2017-10-08 08:00 |  |  |  |  |  |
| 35 | 1.3.13 | 项目计划第二次编写完成 |  | 7d | 2017-10-08 08:00 A | 2017-10-15 17:00 A |  | 100% | finish no earlier than 2017-10-15 17:00 | 姜哲翔; 饶铃根; 寿俐鑫; 吴卓伦; 张俊杰 | 224h | 224h | 6,720 | 6,720 |
| 36 | 1.3.14 | 项目计划第三次编写完成 |  | 5d | 2017-10-16 08:00 A | 2017-10-20 17:00 A |  | 100% | start no earlier than 2017-10-16 08:00 | 姜哲翔; 饶铃根; 寿俐鑫; 吴卓伦; 张俊杰 | 160h | 160h | 4,800 | 4,800 |
| 37 | 1.3.15 | 项目计划修订完成 | milestone | 0d | 2017-10-21 08:00 A | 2017-10-21 08:00 A |  | 100% | start no earlier than 2017-10-21 08:00 |  |  |  |  |  |
| 38 | 1.4 | **项目章程** |  | 6d | 2017-10-23 08:00 A | 2017-10-29 17:00 A |  | 100% |  |  | 166h | 166h | 4,980 | 4,980 |
| 39 | 1.4.1 | 小组第三次会议 |  | 1d | 2017-10-23 08:00 A | 2017-10-23 17:00 A |  | 100% |  | 姜哲翔 [10%]; 饶铃根 [10%]; 寿俐鑫 [20%]; 吴卓伦 [10%]; 张俊杰 [50%] | 40h | 40h | 1,200 | 1,200 |
| 40 | 1.4.2 | 项目基本信息 |  | 2h | 2017-10-24 08:00 A | 2017-10-24 10:00 A |  | 100% | start no earlier than 2017-10-24 08:00 | 姜哲翔 | 2h | 2h | 60 | 60 |
| 41 | 1.4.3 | 项目描述 |  | 4h | 2017-10-24 08:00 A | 2017-10-24 12:00 A |  | 100% | start no earlier than 2017-10-24 08:00 | 饶铃根 | 4h | 4h | 120 | 120 |
| 42 | 1.4.4 | 项目重要性 |  | 4h | 2017-10-24 08:00 A | 2017-10-24 12:00 A |  | 100% | start no earlier than 2017-10-24 08:00 | 寿俐鑫 | 4h | 4h | 120 | 120 |
| 43 | 1.4.5 | 项目范围 |  | 4h | 2017-10-24 08:00 A | 2017-10-24 12:00 A |  | 100% | start no earlier than 2017-10-24 08:00 | 张俊杰 | 4h | 4h | 120 | 120 |
| 44 | 1.4.6 | 项目人员与责任 |  | 2h | 2017-10-25 08:00 A | 2017-10-25 10:00 A |  | 100% | start no earlier than 2017-10-25 08:00 | 张俊杰 | 2h | 2h | 60 | 60 |
| 45 | 1.4.7 | 主要项目干系人 |  | 2h | 2017-10-25 08:00 A | 2017-10-25 10:00 A |  | 100% | start no earlier than 2017-10-25 08:00 | 吴卓伦 | 2h | 2h | 60 | 60 |
| 46 | 1.4.8 | 项目预算 |  | 2h | 2017-10-25 08:00 A | 2017-10-25 10:00 A |  | 100% | start no earlier than 2017-10-25 08:00 | 张俊杰 | 2h | 2h | 60 | 60 |
| 47 | 1.4.9 | 验收标准 |  | 2h | 2017-10-25 08:00 A | 2017-10-25 10:00 A |  | 100% | start no earlier than 2017-10-25 08:00 | 张俊杰 | 2h | 2h | 60 | 60 |
| 48 | 1.4.10 | 项目风险管理 |  | 1d | 2017-10-27 08:00 A | 2017-10-27 17:00 A |  | 100% | start no earlier than 2017-10-27 08:00 | 姜哲翔; 饶铃根; 寿俐鑫; 吴卓伦; 张俊杰 | 40h | 40h | 1,200 | 1,200 |
| 49 | 1.4.11 | 项目章程编写 |  | 2d | 2017-10-26 08:00 A | 2017-10-27 17:00 A |  | 100% | start no earlier than 2017-10-26 08:00 | 姜哲翔; 饶铃根; 吴卓伦; 张俊杰 | 64h | 64h | 1,920 | 1,920 |
| 50 | 1.4.12 | 项目章程提交 | milestone | 0d | 2017-10-29 17:00 A | 2017-10-29 17:00 A |  | 100% | finish no earlier than 2017-10-29 17:00 |  |  |  |  |  |

| ID | WBS | Task | Type | Duration | Start | Finish | Complete | Total slack | Constraint |
| --- | --- | --- | --- | --- | --- | --- | --- | --- | --- |
| 51 | 1.5 | **需求工程计划** |  | 6d | 2017-10-23 08:00 A | 2017-10-29 17:00 A | 100% |  |  |
| 52 | 1.5.1 | 小组第四次会议 |  | 1d | 2017-10-23 08:00 A | 2017-10-23 17:00 A | 100% |  | start no earlier than 2017-10-23 08:00 |
| 53 | 1.5.2 | 时间管理计划 |  | 2h | 2017-10-24 08:00 A | 2017-10-24 10:00 A | 100% |  | start no earlier than 2017-10-24 08:00 |
| 54 | 1.5.3 | 范围管理计划 |  | 2h | 2017-10-24 08:00 A | 2017-10-24 10:00 A | 100% |  | start no earlier than 2017-10-24 08:00 |
| 55 | 1.5.4 | 质量管理计划 |  | 2h | 2017-10-24 08:00 A | 2017-10-24 10:00 A | 100% |  | start no earlier than 2017-10-24 08:00 |
| 56 | 1.5.5 | 定义编写产品愿景、项目视图与范围 |  | 2h | 2017-10-24 08:00 A | 2017-10-24 10:00 A | 100% |  | start no earlier than 2017-10-24 08:00 |
| 57 | 1.5.6 | 识别用户类型及其特征并对用户群分类 |  | 2h | 2017-10-24 08:00 A | 2017-10-24 10:00 A | 100% |  | start no earlier than 2017-10-24 08:00 |
| 58 | 1.5.7 | 为每类用户选出用户代表 |  | 1h | 2017-10-24 08:00 A | 2017-10-24 09:00 A | 100% |  | start no earlier than 2017-10-24 08:00 |
| 59 | 1.5.8 | 安排有典型用户组成的焦点小组 |  | 1h | 2017-10-24 08:00 A | 2017-10-24 09:00 A | 100% |  | start no earlier than 2017-10-24 08:00 |
| 60 | 1.5.9 | 与用户代表协同发现用户需求 |  | 1h | 2017-10-24 08:00 A | 2017-10-24 09:00 A | 100% |  | start no earlier than 2017-10-24 08:00 |
| 61 | 1.5.10 | 识别系统实践和反应 |  | 1h | 2017-10-24 08:00 A | 2017-10-24 09:00 A | 100% |  | start no earlier than 2017-10-24 08:00 |
| 62 | 1.5.11 | 召开应用程序开发联系会议（JAD） |  | 1h | 2017-10-24 08:00 A | 2017-10-24 09:00 A | 100% |  | start no earlier than 2017-10-24 08:00 |
| 63 | 1.5.12 | 分析用户工作流程 |  | 1h | 2017-10-24 08:00 A | 2017-10-24 09:00 A | 100% |  | start no earlier than 2017-10-24 08:00 |
| 64 | 1.5.13 | 确定质量属性 |  | 1h | 2017-10-24 08:00 A | 2017-10-24 09:00 A | 100% |  | start no earlier than 2017-10-24 08:00 |
| 65 | 1.5.14 | 分发问卷 |  | 1h | 2017-10-24 08:00 A | 2017-10-24 09:00 A | 100% |  | start no earlier than 2017-10-24 08:00 |
| 66 | 1.5.15 | 检查现有系统在需求方面的问题报告 |  | 1h | 2017-10-24 08:00 A | 2017-10-24 09:00 A | 100% |  | start no earlier than 2017-10-24 08:00 |
| 67 | 1.5.16 | 分析文档 |  | 1h | 2017-10-24 08:00 A | 2017-10-24 09:00 A | 100% |  | start no earlier than 2017-10-24 08:00 |
| 68 | 1.5.17 | 需求重用 |  | 1h | 2017-10-24 08:00 A | 2017-10-24 09:00 A | 100% |  | start no earlier than 2017-10-24 08:00 |
| 69 | 1.5.18 | 需求工程计划文档编写 |  | 3d | 2017-10-25 08:00 A | 2017-10-27 17:00 A | 100% |  | start no earlier than 2017-10-25 08:00 |
| 70 | 1.5.19 | 需求工程计划完成 | milestone | 0d | 2017-10-29 17:00 A | 2017-10-29 17:00 A | 100% |  | finish no earlier than 2017-10-29 17:00 |
| 71 | 1.6 | **QA计划** |  | 6d | 2017-10-30 08:00 | 2017-11-05 17:00 |  |  |  |
| 72 | 1.6.1 | 小组第五次会议 |  | 1d | 2017-10-30 08:00 | 2017-10-30 17:00 |  | 4d |  |
| 73 | 1.6.2 | 建立组织结构 |  | 2d | 2017-10-31 08:00 | 2017-11-01 17:00 |  | 57d | start no earlier than 2017-10-31 08:00 |
| 74 | 1.6.3 | 配置岗位人员 |  | 2h | 2017-11-02 08:00 | 2017-11-02 10:00 |  | 56.75d | start no earlier than 2017-11-02 08:00 |
| 75 | 1.6.4 | 需求定义审查 |  | 2h | 2017-11-02 08:00 | 2017-11-02 10:00 |  | 56.75d | start no earlier than 2017-11-02 08:00 |
| 76 | 1.6.5 | QA计划编写 |  | 3d | 2017-11-01 08:00 | 2017-11-05 17:00 |  | 55d | finish no earlier than 2017-11-05 17:00 |
| 77 | 1.6.6 | QA计划编写完成 | milestone | 0d | 2017-10-30 08:00 | 2017-10-30 08:00 |  | 5d |  |

| ID | WBS | Task | Type | Duration | Start | Finish | Complete | Remaining | Total slack | Constraint |
| --- | --- | --- | --- | --- | --- | --- | --- | --- | --- | --- |
| 78 | 1.7 | **需求工程计划修改及评审** |  | 11d | 2017-10-30 08:00 | 2017-11-12 17:00 |  |  |  |  |
| 79 | 1.7.1 | 小组第六次会议 |  | 1d | 2017-10-30 08:00 | 2017-10-30 17:00 |  |  | 9d |  |
| 80 | 1.7.2 | 为应用环境建模 |  | 4h | 2017-10-31 08:00 | 2017-10-31 12:00 |  |  | 58.5d | start no earlier than 2017-10-31 08:00 |
| 81 | 1.7.3 | 绘制关联图 |  | 4h | 2017-10-31 08:00 | 2017-10-31 12:00 |  |  | 58.5d | start no earlier than 2017-10-31 08:00 |
| 82 | 1.7.4 | 创建用户界面以及技术原型 |  | 2h | 2017-10-31 08:00 | 2017-10-31 10:00 |  |  | 58.75d | start no earlier than 2017-10-31 08:00 |
| 83 | 1.7.5 | 分析可行性 |  | 1d | 2017-10-31 08:00 | 2017-10-31 17:00 |  |  | 58d | start no earlier than 2017-10-31 08:00 |
| 84 | 1.7.6 | 需求优先级排序 |  | 4h | 2017-11-01 08:00 | 2017-11-01 12:00 |  |  | 57.5d | start no earlier than 2017-11-01 08:00 |
| 85 | 1.7.7 | 编写数据字典 |  | 4h | 2017-11-01 08:00 | 2017-11-01 12:00 |  |  | 57.5d | start no earlier than 2017-11-01 08:00 |
| 86 | 1.7.8 | 需求建模 |  | 4h | 2017-11-01 08:00 | 2017-11-01 12:00 |  |  | 57.5d | start no earlier than 2017-11-01 08:00 |
| 87 | 1.7.9 | 分析系统与外部世界之间的联系 |  | 4h | 2017-11-01 08:00 | 2017-11-01 12:00 |  |  | 57.5d | start no earlier than 2017-11-01 08:00 |
| 88 | 1.7.10 | 将需求分配给子系统 |  | 4h | 2017-11-01 08:00 | 2017-11-01 12:00 |  |  | 57.5d | start no earlier than 2017-11-01 08:00 |
| 89 | 1.7.11 | 需求工程计划修改 |  | 7d | 2017-11-02 08:00 | 2017-11-12 17:00 |  |  | 50d | finish no earlier than 2017-11-12 17:00 |
| 90 | 1.7.12 | 需求工程计划修改完成 | milestone | 0d | 2017-11-10 17:00 | 2017-11-10 17:00 |  |  | 50d | finish no earlier than 2017-11-10 17:00 |
| 91 | 1.8 | **软件需求规格说明书** |  | 49d | 2017-10-02 08:00 A | 2017-12-03 17:00 | 9% | 44.36d |  |  |
| 92 | 1.8.1 | 小组第七次会议 |  | 1d? | 2017-11-10 08:00 | 2017-11-10 17:00 |  |  | 50d | start no earlier than 2017-11-10 08:00 |
| 93 | 1.8.2 | ER图，数据流图，状态转换图，IPO图等图的制作 |  | 4h | 2017-10-02 08:00 A | 2017-10-02 12:00 A | 100% |  |  |  |
| 94 | 1.8.3 | 采取使用需求规格说明模板 |  | 4h | 2017-10-02 08:00 A | 2017-10-02 12:00 A | 100% |  |  |  |
| 95 | 1.8.4 | 明确需求来源 |  | 4h | 2017-10-02 08:00 A | 2017-10-02 12:00 A | 100% |  |  |  |
| 96 | 1.8.5 | 为每一项需求注上唯一标识 |  | 4h | 2017-10-02 08:00 A | 2017-10-02 12:00 A | 100% |  |  |  |
| 97 | 1.8.6 | 记录业务规则 |  | 4h | 2017-10-03 08:00 A | 2017-10-03 12:00 A | 100% |  |  | start no earlier than 2017-10-03 08:00 |
| 98 | 1.8.7 | 记录非功能需求 |  | 4h | 2017-10-03 08:00 A | 2017-10-03 12:00 A | 100% |  |  | start no earlier than 2017-10-03 08:00 |
| 99 | 1.8.8 | 创建需求跟踪能力矩阵 |  | 4h | 2017-10-03 08:00 A | 2017-10-03 12:00 A | 100% |  |  | start no earlier than 2017-10-03 08:00 |
| 100 | 1.8.9 | 文档约定 |  | 2h | 2017-11-10 08:00 | 2017-11-10 10:00 |  |  | 50.75d | start no earlier than 2017-11-10 08:00 |
| 101 | 1.8.10 | 总体描述 |  | 2h | 2017-11-10 08:00 | 2017-11-10 10:00 |  |  | 50.75d | start no earlier than 2017-11-10 08:00 |
| 102 | 1.8.11 | 系统特征 |  | 2h | 2017-10-10 08:00 | 2017-10-10 10:00 |  |  | 74.75d | start no earlier than 2017-10-10 08:00 |
| 103 | 1.8.12 | 界面原型制作 |  | 10d | 2017-11-13 08:00 | 2017-11-24 17:00 |  |  | 40d | start no earlier than 2017-11-11 08:00 |
| 104 | 1.8.13 | 功能性需求获取 |  | 1h | 2017-10-25 08:00 | 2017-10-25 09:00 |  |  | 62.88d | start no earlier than 2017-10-25 08:00 |
| 105 | 1.8.14 | 外部接口需求 |  | 1h | 2017-10-25 08:00 | 2017-10-25 09:00 |  |  | 62.88d | start no earlier than 2017-10-25 08:00 |
| 106 | 1.8.15 | 其他非功能性需求 |  | 1h | 2017-10-25 08:00 | 2017-10-25 09:00 |  |  | 62.88d | start no earlier than 2017-10-25 08:00 |
| 107 | 1.8.16 | 术语表制作 |  | 1h | 2017-10-25 08:00 | 2017-10-25 09:00 |  |  | 62.88d | start no earlier than 2017-10-25 08:00 |
| 108 | 1.8.17 | 分析模型 |  | 1h | 2017-10-25 08:00 | 2017-10-25 09:00 |  |  | 62.88d | start no earlier than 2017-10-25 08:00 |
| 109 | 1.8.18 | 待确定问题清单 |  | 1h | 2017-10-25 08:00 | 2017-10-25 09:00 |  |  | 62.88d | start no earlier than 2017-10-25 08:00 |
| 110 | 1.8.19 | 软件需求规格说明书制作 |  | 15d | 2017-11-06 08:00 | 2017-11-24 17:00 |  |  | 40d | start no earlier than 2017-11-06 08:00 |
| 111 | 1.8.20 | Team Buildng |  | 1d | 2017-12-01 08:00 | 2017-12-02 17:00 |  |  | 35d | finish no earlier than 2017-12-02 17:00 |
| 112 | 1.8.21 | 软件需求规格说明书修改 |  | 5d | 2017-11-24 08:00 | 2017-11-30 17:00 |  |  | 36d | start no earlier than 2017-11-24 08:00 |
| 113 | 1.8.22 | 软件需求规格说明书初稿完成 | milestone | 0d | 2017-10-02 08:00 | 2017-10-02 08:00 |  |  | 48d |  |

| ID | WBS | Task | Type | Duration | Start | Finish | Total slack | Constraint |
| --- | --- | --- | --- | --- | --- | --- | --- | --- |
| 114 | 1.9 | **软件需求规格说明书修改及评审** |  | 6d | 2017-12-04 08:00 | 2017-12-10 17:00 |  |  |
| 115 | 1.9.1 | 小组第八次会议 |  | 1d | 2017-12-04 08:00 | 2017-12-04 17:00 | 4d |  |
| 116 | 1.9.2 | 编写测试需求 |  | 1d | 2017-12-05 08:00 | 2017-12-05 17:00 | 33d | start no earlier than 2017-12-05 08:00 |
| 117 | 1.9.3 | 编写用户手册 |  | 1d | 2017-12-06 08:00 | 2017-12-06 17:00 | 32d | start no earlier than 2017-12-06 08:00 |
| 118 | 1.9.4 | 定义验收标准 |  | 3h | 2017-12-06 08:00 | 2017-12-06 11:00 | 32.62d | start no earlier than 2017-12-06 08:00 |
| 119 | 1.9.5 | 模拟需求 |  | 3h | 2017-12-06 08:00 | 2017-12-06 11:00 | 32.62d | start no earlier than 2017-12-06 08:00 |
| 120 | 1.9.6 | 修改软件需求规格说明书初稿修改 |  | 2d | 2017-12-07 08:00 | 2017-12-08 17:00 | 30d | start no earlier than 2017-12-07 08:00 |
| 121 | 1.9.7 | 修改完成 | milestone | 0d | 2017-12-08 08:00 | 2017-12-08 08:00 | 31d | start no earlier than 2017-12-08 08:00 |
| 122 | 1.10 | **软件需求变更文档** |  | 6d | 2017-12-11 08:00 | 2017-12-17 17:00 |  |  |
| 123 | 1.10.1 | 小组第九次会议 |  | 1d | 2017-12-11 08:00 | 2017-12-11 17:00 | 4d |  |
| 124 | 1.10.2 | 变更描述编写 |  | 2h | 2017-12-12 08:00 | 2017-12-12 10:00 | 28.75d | start no earlier than 2017-12-12 08:00 |
| 125 | 1.10.3 | 变更人确定 |  | 2h | 2017-12-12 08:00 | 2017-12-12 10:00 | 28.75d | start no earlier than 2017-12-12 08:00 |
| 126 | 1.10.4 | 变更时间确定 |  | 2h | 2017-12-12 08:00 | 2017-12-12 10:00 | 28.75d | start no earlier than 2017-12-12 08:00 |
| 127 | 1.10.5 | 变更内容分析 |  | 2h | 2017-12-13 08:00 | 2017-12-13 10:00 | 27.75d | start no earlier than 2017-12-13 08:00 |
| 128 | 1.10.6 | 变更时间分析 |  | 2h | 2017-12-13 08:00 | 2017-12-13 10:00 | 27.75d | start no earlier than 2017-12-13 08:00 |
| 129 | 1.10.7 | 变更成本分析 |  | 2h | 2017-12-13 08:00 | 2017-12-13 10:00 | 27.75d | start no earlier than 2017-12-13 08:00 |
| 130 | 1.10.8 | 变更其他需求分析 |  | 2h | 2017-12-14 08:00 | 2017-12-14 10:00 | 26.75d | start no earlier than 2017-12-14 08:00 |
| 131 | 1.10.9 | 变更组件分析 |  | 2h | 2017-12-14 08:00 | 2017-12-14 10:00 | 26.75d | start no earlier than 2017-12-14 08:00 |
| 132 | 1.10.10 | 确定建立需求变更控制流程 |  | 2h | 2017-12-14 08:00 | 2017-12-14 10:00 | 26.75d | start no earlier than 2017-12-14 08:00 |
| 133 | 1.10.11 | 建立变更控制委员会 |  | 1h | 2017-12-15 08:00 | 2017-12-15 09:00 | 25.88d | start no earlier than 2017-12-15 08:00 |
| 134 | 1.10.12 | 维护需求变更历史记录 |  | 2h | 2017-12-15 08:00 | 2017-12-15 10:00 | 25.75d | start no earlier than 2017-12-15 08:00 |
| 135 | 1.10.13 | 跟踪每个需求状态 |  | 2h | 2017-12-15 08:00 | 2017-12-15 10:00 | 25.75d | start no earlier than 2017-12-15 08:00 |
| 136 | 1.10.14 | 维护需求可跟踪矩阵 |  | 2h | 2017-12-15 08:00 | 2017-12-15 10:00 | 25.75d | start no earlier than 2017-12-15 08:00 |
| 137 | 1.10.15 | 软件需求变更文档编写 |  | 3d | 2017-12-13 08:00 | 2017-12-17 17:00 | 25d | finish no earlier than 2017-12-17 17:00 |
| 138 | 1.10.16 | 软件需求变更文档完成 | milestone | 0d | 2017-12-17 08:00 | 2017-12-17 08:00 | 0d | start no earlier than 2017-12-17 08:00 |

| ID | WBS | Task | Type | Duration | Start | Finish | Predecessors | Total slack | Constraint |
| --- | --- | --- | --- | --- | --- | --- | --- | --- | --- |
| 139 | 1.11 | **软件需求变更文档修改及评审** |  | 6d | 2017-12-18 08:00 | 2017-12-24 17:00 | 138 |  |  |
| 140 | 1.11.1 | 小组第十次会议 |  | 1d | 2017-12-18 08:00 | 2017-12-18 17:00 |  | 4d |  |
| 141 | 1.11.2 | 修改软件需求变更文档 |  | 5d | 2017-12-18 08:00 | 2017-12-22 17:00 |  | 0d |  |
| 142 | 1.11.3 | team building |  | 1d | 2017-12-19 08:00 | 2017-12-19 17:00 |  | 23d | start no earlier than 2017-12-19 08:00 |
| 143 | 1.11.4 | 需求变更文档完成修改 | milestone | 0d | 2017-12-24 08:00 | 2017-12-24 08:00 |  | 20d | start no earlier than 2017-12-24 08:00 |
| 144 | 1.12 | **系统设计与实现计划** |  | 6d | 2017-12-25 08:00 | 2017-12-31 17:00 |  |  |  |
| 145 | 1.12.1 | 小组第十一次会议 |  | 1d? | 2017-12-25 08:00 | 2017-12-25 17:00 |  | 4d |  |
| 146 | 1.13 | **软件概要设计说明** |  | 11d | 2018-01-01 08:00 | 2018-01-14 17:00 |  |  |  |
| 147 | 1.13.1 | 小组第十二次会议 |  | 1d? | 2018-01-01 08:00 | 2018-01-01 17:00 |  | 9d |  |
| 148 | 1.14 | **测试计划** |  | 6d | 2018-01-08 08:00 | 2018-01-14 17:00 |  |  |  |
| 149 | 1.14.1 | 小组第十三次会议 |  | 1d? | 2018-01-08 08:00 | 2018-01-08 17:00 |  | 4d |  |
| 150 | 1.15 | **安装部署计划** |  | 6d | 2018-01-08 08:00 | 2018-01-14 17:00 |  |  |  |
| 151 | 1.15.1 | 小组第十四次会议 |  | 1d? | 2018-01-08 08:00 | 2018-01-08 17:00 |  | 4d |  |
| 152 | 1.16 | **培训计划** |  | 6d | 2018-01-08 08:00 | 2018-01-14 17:00 |  |  |  |
| 153 | 1.16.1 | 小组第十五次会议 |  | 1d? | 2018-01-08 08:00 | 2018-01-08 17:00 |  | 4d |  |
| 154 | 1.17 | **系统维护计划** |  | 6d | 2018-01-08 08:00 | 2018-01-14 17:00 |  |  |  |
| 155 | 1.17.1 | 小组第十六次会议 |  | 1d? | 2018-01-08 08:00 | 2018-01-08 17:00 |  | 4d |  |
| 156 | 1.17.2 | 维护系统 |  | 1d? | 2018-01-08 08:00 | 2018-01-08 17:00 |  | 4d |  |
| 157 | 1.17.3 | <新任务> |  | 1d? | 2018-01-08 08:00 | 2018-01-08 17:00 |  | 4d |  |
| 158 | 1.17.4 | <新任务> |  | 1d? | 2018-01-08 08:00 | 2018-01-08 17:00 |  | 4d |  |
| 159 | 1.17.5 | <新任务> |  | 1d? | 2018-01-08 08:00 | 2018-01-08 17:00 |  | 4d |  |
| 160 | 1.17.6 | <新任务> |  | 1d? | 2018-01-08 08:00 | 2018-01-08 17:00 |  | 4d |  |
| 161 | 1.18 | **项目总结报告** |  | 6d | 2018-01-15 08:00 | 2018-01-20 17:00 |  |  |  |
| 162 | 1.18.1 | 小组第十七次会议 |  | 1d? | 2018-01-15 08:00 | 2018-01-15 17:00 |  | 4d |  |
| 163 | 2 | 项目完成 | milestone, manual | 0d | 2018-01-20 08:00 | 2018-01-20 08:00 |  |  |  |
